Schedule from MS Project, 2023-05-29 to 2023-10-17, costs in $.

## Calendars

- Standard: Mon-Fri 08:00-12:00, 13:00-17:00; Sat-Sun off.

## Resources

| Resource | Group | Rate | Cost per use |
| --- | --- | --- | --- |
| Bradley Harris | Management | 55 | 165 |
| Systems Analyst | Design | 45 | 135 |
| Web Developers | Design | 38 | 114 |
| Database Designer | Design | 38 | 114 |
| Database Engineer | Infrastructure | 50 | 150 |
| Network Engineer | Infrastructure | 40 | 120 |
| Web Designer | Design | 26 | 78 |
| Rhys Matthews | Design | 50 | 150 |
| Mitchel Olsen | Management | 55 | 165 |
| Soham Verma | Design | 45 | 135 |
| Sourav Laha | Analysis | 38 | 114 |
| Huy Tran | Analysis | 38 | 114 |
| Server Hardware | Infrastructure |  | 120000 |
| Web Hosting /month | Infrastructure |  | 100 |
| Server renting | Testing |  | 500 |

## Schedule

| ID | WBS | Task | Type | Duration | Start | Finish | Predecessors | Total slack | Free slack | Resources | Work | Cost |
| --- | --- | --- | --- | --- | --- | --- | --- | --- | --- | --- | --- | --- |
| 1 | 1 | **Requirements Gathering** |  | 15d | 2023-05-29 | 2023-06-16 |  | 0d |  |  | 368h | 19,263 |
| 2 | 1.1 | Construct questionaires & interview questions |  | 2d | 2023-05-29 | 2023-05-30 |  | 0d |  | Bradley Harris; Mitchel Olsen; Rhys Matthews | 48h | 3,040 |
| 3 | 1.2 | Gather relevant business documentation and processes |  | 3d | 2023-05-29 | 2023-05-31 |  | 4d | 0d | Huy Tran; Sourav Laha; Systems Analyst | 72h | 3,267 |
| 4 | 1.3 | Conduct interviews with staff |  | 5d | 2023-06-01 | 2023-06-07 | 2, 3 | 4d |  | Bradley Harris; Mitchel Olsen; Rhys Matthews | 120h | 6,880 |
| 5 | 1.4 | Publish survey for customers |  | 10d | 2023-05-31 | 2023-06-13 | 2 | 0d |  | Soham Verma; Web Hosting /month | 80h | 3,835 |
| 6 | 1.5 | Sort and categorise data gathered |  | 3d | 2023-06-14 | 2023-06-16 | 4, 5 | 0d |  | Huy Tran; Systems Analyst | 48h | 2,241 |
| 7 | 2 | Requirements Phase Complete | milestone | 0d | 2023-06-16 | 2023-06-16 | 6 | 0d |  |  |  |  |
| 8 | 3 | **Analysis Phase** |  | 8d | 2023-06-19 | 2023-06-28 | 7 | 0d |  |  | 168h | 8,152 |
| 9 | 3.1 | Analyse gathered business data |  | 5d | 2023-06-19 | 2023-06-23 |  | 0d |  | Sourav Laha; Systems Analyst | 80h | 3,569 |
| 10 | 3.2 | Analyse customer responses |  | 2d | 2023-06-19 | 2023-06-20 |  | 3d |  | Huy Tran | 16h | 722 |
| 11 | 3.3 | Identify key system requirements |  | 3d | 2023-06-26 | 2023-06-28 | 9, 10 | 0d |  | Bradley Harris; Database Designer; Rhys Matthews | 72h | 3,861 |
| 12 | 4 | Analysis Phase Complete | milestone | 0d | 2023-06-28 | 2023-06-28 | 11 | 0d |  |  |  |  |
| 13 | 5 | **Discussion & Planning** |  | 14d | 2023-06-29 | 2023-07-18 | 12 | 0d |  |  | 336h | 17,957 |
| 14 | 5.1 | Internal discussion workshops |  | 2d | 2023-06-29 | 2023-06-30 |  | 0d |  | Bradley Harris; Huy Tran; Mitchel Olsen; Rhys Matthews; Soham Verma; Sourav Laha | 96h | 5,339 |
| 15 | 5.2 | Discussion workshops with staff & stakeholders |  | 3d | 2023-07-03 | 2023-07-05 | 14 | 0d |  | Bradley Harris; Database Designer; Mitchel Olsen; Web Developers | 96h | 5,022 |
| 16 | 5.3 | Create use cases |  | 3d | 2023-07-06 | 2023-07-10 | 15 | 0d |  | Sourav Laha; Soham Verma | 48h | 2,241 |
| 17 | 5.4 | Create activity diagrams / process flows |  | 6d | 2023-07-11 | 2023-07-18 | 16 | 0d |  | Mitchel Olsen; Rhys Matthews | 96h | 5,355 |
| 18 | 6 | Discussion & Planning Completed | milestone | 0d | 2023-07-18 | 2023-07-18 | 17 | 0d |  |  |  |  |
| 19 | 7 | **Design Phase** |  | 24d | 2023-07-19 | 2023-08-21 | 18 | 0d |  |  | 920h | 39,888 |
| 20 | 7.1 | Design database structure |  | 14d | 2023-07-19 | 2023-08-07 |  | 0d |  | Database Designer; Rhys Matthews | 224h | 10,120 |
| 21 | 7.2 | Design hardware configuration |  | 7d | 2023-08-08 | 2023-08-16 | 20 | 0d |  | Bradley Harris; Mitchel Olsen; Network Engineer | 168h | 8,850 |
| 22 | 7.3 | Create booking management portal |  | 10d | 2023-07-19 | 2023-08-01 |  | 4d | 0d | Web Designer; Web Developers; Sourav Laha | 240h | 8,466 |
| 23 | 7.4 | Create front end website |  | 7d | 2023-08-02 | 2023-08-10 | 22 | 4d |  | Soham Verma; Web Designer; Web Developers | 168h | 6,431 |
| 24 | 7.5 | Tie together system components |  | 3d | 2023-08-17 | 2023-08-21 | 21, 23 | 0d |  | Database Engineer; Network Engineer; Rhys Matthews; Soham Verma; Web Developers | 120h | 6,021 |
| 25 | 8 | Design Phase Complete | milestone | 0d | 2023-08-21 | 2023-08-21 | 24 | 0d |  |  |  |  |

| ID | WBS | Task | Type | Duration | Start | Finish | Predecessors | Total slack | Resources | Work | Cost |
| --- | --- | --- | --- | --- | --- | --- | --- | --- | --- | --- | --- |
| 26 | 9 | **Testing & Adjusting** |  | 16d | 2023-08-22 | 2023-09-12 | 25 | 0d |  | 464h | 22,571 |
| 27 | 9.1 | Create testing environment |  | 2d | 2023-08-22 | 2023-08-23 |  | 0d | Bradley Harris; Mitchel Olsen; Server renting | 32h | 2,590 |
| 28 | 9.2 | Simulate business processes |  | 5d | 2023-08-24 | 2023-08-30 | 27 | 0d | Huy Tran; Soham Verma; Sourav Laha | 120h | 5,203 |
| 29 | 9.3 | Gather test results & data |  | 2d | 2023-08-31 | 2023-09-01 | 28 | 0d | Huy Tran; Sourav Laha | 32h | 1,444 |
| 30 | 9.4 | Make necessary adjustments to software |  | 7d | 2023-09-04 | 2023-09-12 | 29 | 0d | Bradley Harris; Database Designer; Rhys Matthews; Soham Verma; Web Developers | 280h | 13,334 |
| 31 | 10 | Testing & Adjusting Complete | milestone | 0d | 2023-09-12 | 2023-09-12 | 30 | 0d |  |  |  |
| 32 | 11 | **Implementation** |  | 19d | 2023-09-13 | 2023-10-09 | 31 | 0d |  | 496h | 143,895 |
| 33 | 11.1 | Deploy Server Hardware |  | 5d | 2023-09-13 | 2023-09-19 |  | 0d | Server Hardware; Bradley Harris; Database Engineer; Mitchel Olsen; Network Engineer | 160h | 128,600 |
| 34 | 11.2 | Deploy software at airport lounges |  | 14d | 2023-09-20 | 2023-10-09 | 33 | 0d | Rhys Matthews; Soham Verma; Sourav Laha | 336h | 15,295 |
| 35 | 12 | Implementation Complete | milestone | 0d | 2023-10-09 | 2023-10-09 | 34 | 0d |  |  |  |
| 36 | 13 | **Project Closure** |  | 6d | 2023-10-10 | 2023-10-17 | 35 | 0d |  | 112h | 6,384 |
| 37 | 13.1 | Staff Training |  | 2d | 2023-10-10 | 2023-10-11 |  | 0d | Mitchel Olsen; Rhys Matthews; Soham Verma | 48h | 2,850 |
| 38 | 13.2 | Document booking system deployment |  | 2d | 2023-10-12 | 2023-10-13 | 37 | 0d | Huy Tran; Sourav Laha | 32h | 1,444 |
| 39 | 13.3 | Identify & plan future work |  | 2d | 2023-10-16 | 2023-10-17 | 38 | 0d | Bradley Harris; Mitchel Olsen | 32h | 2,090 |
| 40 | 14 | Project Completed | milestone | 0d | 2023-10-17 | 2023-10-17 | 39 | 0d |  |  |  |
